# Simple Project Plan

Schedule from MS Project, 2023-01-17 to 2023-08-21, A marks actual dates.

## Calendars

- Standard: Mon-Fri 08:00-12:00, 13:00-17:00; Sat-Sun off.

## Schedule

| ID | WBS | Task | Type | Duration | Start | Finish | Predecessors | Complete | Remaining | Total slack | Free slack |
| --- | --- | --- | --- | --- | --- | --- | --- | --- | --- | --- | --- |
| 1 | 1 | **Prepare** |  | 36d | 2023-01-17 A | 2023-03-07 |  | 79% | 7.54d | 118d |  |
| 2 | 1.1 | Develop Project Proposal Plan | manual | 20d | 2023-01-17 A | 2023-02-13 A |  | 100% |  |  |  |
| 3 | 1.2 | M-ECU Project Approval | manual | 1d | 2023-01-22 A | 2023-01-22 A | 2SS | 100% |  |  |  |
| 4 | 1.3 | Agree the purpose of the assessment; | manual | 5d | 2023-01-23 A | 2023-01-27 A | 3 | 100% |  |  |  |
| 5 | 1.4 | Identify the scope of the assessment and Authorization Boundary | manual | 5d | 2023-01-23 A | 2023-01-27 A | 4SS | 100% |  |  |  |
| 6 | 1.5 | Project Pitch | manual | 6d | 2023-01-23 A | 2023-01-30 A | 3SS | 100% |  |  |  |
| 7 | 1.6 | Organization Structure, Responsibilities & Stakeholders Identification | manual | 3d | 2023-01-23 A | 2023-01-25 | 5SS | 75% | 0.75d |  |  |
| 8 | 1.7 | Identify the assumptions and constraints associated with the assessment; | manual | 1d? | 2023-01-26 | 2023-01-26 | 7 |  |  |  |  |
| 9 | 1.8 | Identify the sources of information to be used as inputs to the assessment; | manual | 3d | 2023-01-26 | 2023-01-30 | 7 |  |  |  |  |
| 10 | 1.9 | Identify the risk model and analytic approaches (i.e., assessment and analysis approaches) to be employed during the assessment. | manual | 4d | 2023-01-31 | 2023-02-03 | 9 |  |  |  |  |
| 11 | 1.10 | Management Project Approval | milestone | 0d | 2023-02-03 A | 2023-02-03 A | 3 | 100% |  |  |  |
| 12 | 1.11 | Issuance of Project Endorsement Letter | milestone | 0d | 2023-02-06 A | 2023-02-06 A | 11 | 100% |  |  |  |
| 13 | 1.12 | Revise Project Proposal Based on Feedback Received |  | 2d | 2023-02-21 A | 2023-02-22 A | 2FS+5d | 100% |  |  |  |
| 14 | 1.13 | Compile Portfolio Items |  | 9d | 2023-02-23 A | 2023-03-07 | 2FF, 13 | 60% | 3.6d | 118d | 0d |
| 15 | 1.14 | Portfolio Submission | milestone | 0d | 2023-03-07 | 2023-03-07 | 14 |  |  | 118d | 116d |
| 16 | 2 | **Conduct** |  | 96d? | 2023-02-13 | 2023-06-26 |  |  |  | 0d |  |
| 17 | 2.1 | Review of the Regulatory Guidelines for harmonization - CBN & NIST | manual | 62d | 2023-02-13 | 2023-05-09 | 11 |  |  |  |  |
| 18 | 2.2 | Business Environment & Threat Landscape | manual | 3d | 2023-02-13 | 2023-02-15 | 17SS |  |  |  |  |
| 19 | 2.3 | Identify threat sources that are relevant to organizations; | manual | 3d | 2023-02-16 | 2023-02-20 | 18 |  |  |  |  |
| 20 | 2.4 | Identify threat events that could be produced by those sources; | manual | 3d | 2023-02-21 | 2023-02-23 | 19 |  |  |  |  |
| 21 | 2.5 | Hardware and Network Identification (associated the hardware, software, firmware, and systems) | manual | 3d | 2023-02-13 | 2023-02-15 | 17SS |  |  |  |  |
| 22 | 2.6 | Review of Policies and Processes relating to Cyber Security - Physical & System Securities in place | manual | 5d | 2023-02-13 | 2023-02-17 | 17SS |  |  |  |  |
| 23 | 2.7 | Identify vulnerabilities within organizations that could be exploited by threat sources through specific threat events and the predisposing conditions that could affect successful exploitation; | manual | 8d | 2023-02-21 | 2023-03-02 | 19 |  |  |  |  |
| 24 | 2.8 | Determine the likelihood that the identified threat sources would initiate specific threat events and the likelihood that the threat events would be successful; | manual | 1d? | 2023-02-21 | 2023-02-21 | 23SS |  |  |  |  |
| 25 | 2.9 | Determine the adverse impacts to organizational operations and assets, individuals, other organizations, and the Nation resulting from the exploitation of vulnerabilities by threat sources (through specific threat events) | manual | 3d | 2023-02-22 | 2023-02-24 | 24 |  |  |  |  |
| 26 | 2.10 | Determine information security risks as a combination of likelihood of threat exploitation of vulnerabilities and the impact of such exploitation, including any uncertainties associated with the risk determinations. | manual | 86d | 2023-02-27 | 2023-06-26 | 25 |  |  |  |  |

Notes:
- 1: This is a summary task. Use summary tasks to help organize your project into sections.

| ID | WBS | Task | Type | Duration | Start | Finish | Predecessors | Total slack | Free slack | Constraint |
| --- | --- | --- | --- | --- | --- | --- | --- | --- | --- | --- |
| 27 | 3 | **Communicate** |  | 135d | 2023-02-14 | 2023-08-21 |  | 0d |  |  |
| 28 | 3.1 | Develop the Risk Assessment Report |  | 1d | 2023-08-17 | 2023-08-17 | 15, 26FF | 2d | 0d | finish no earlier than 2023-08-17 |
| 29 | 3.2 | Share information developed in the execution of the risk assessment, to support other risk management activities. | manual | 3d | 2023-02-27 | 2023-03-01 |  |  |  |  |
| 30 | 3.3 | Mid-Project Discussions | milestone, manual | 66d | 2023-02-14 | 2023-05-16 |  |  |  |  |
| 31 | 3.4 | Project Completion Meeting | milestone, manual | 0d | 2023-08-18 | 2023-08-18 | 28 |  |  |  |
| 32 | 3.5 | Submission of Report to ECU | milestone, manual | 0d | 2023-08-21 | 2023-08-21 |  |  |  |  |

Notes:
- 29: Tasks with the pushpin next to them are manually scheduled tasks. Use them when you don't want Project to move the task. Also, you can enter freeform text in the duration, start and finish fields or leave them blank if you don't have all the information yet.
